# Production_Line_Commissioning

Schedule from MS Project, 2026-10-21 to 2027-01-12, status date 2026-10-21, A marks actual dates.

## Calendars

- Standard: Mon-Fri 08:00-12:00, 13:00-17:00; Sat-Sun off.

## Resources

| Resource |
| --- |
| Project Manager |
| Site Engineer |
| Mechanical Fitter |
| Electrician |
| Automation Engineer |
| QA Inspector |
| Safety Officer |
| Logistics Coordinator |
| Civil Contractor |
| Operator Trainer |

## Schedule

| ID | WBS | Task | Duration | Start | Finish | Predecessors | Complete | Remaining | Total slack | Free slack | Resources | Work | Actual work |
| --- | --- | --- | --- | --- | --- | --- | --- | --- | --- | --- | --- | --- | --- |
| 1 | 1 | **Project Initiation** | 3d? | 2026-10-21 A | 2026-10-23 A |  | 100% |  |  |  |  | 152h | 152h |
| 2 | 1.1 | Kick-off meeting & project charter | 2d? | 2026-10-21 A | 2026-10-22 A |  | 100% |  |  |  | Project Manager | 16h | 16h |
| 3 | 1.2 | Define scope & acceptance criteria | 3d? | 2026-10-21 A | 2026-10-23 A |  | 100% |  |  |  | Project Manager; Site Engineer | 48h | 48h |
| 4 | 1.3 | Initial risk register | 2d? | 2026-10-21 A | 2026-10-22 A |  | 100% |  |  |  | Project Manager; Safety Officer | 32h | 32h |
| 5 | 1.4 | Budget approval | 1d? | 2026-10-21 A | 2026-10-21 A |  | 100% |  |  |  | Project Manager | 8h | 8h |
| 6 | 1.5 | Mobilize site team | 3d? | 2026-10-21 A | 2026-10-23 A |  | 100% |  |  |  | Site Engineer; Logistics Coordinator | 48h | 48h |
| 7 | 2 | **Planning & Engineering** | 6.2d? | 2026-10-21 A | 2026-10-29 |  | 88% | 0.73d? | 53.2d |  |  | 400h | 380.8h |
| 8 | 2.1 | Develop commissioning plan | 5d? | 2026-10-21 A | 2026-10-27 A | 2, 6 | 100% |  |  |  | Project Manager; Site Engineer | 80h | 80h |
| 9 | 2.2 | Layout review & 3D model check | 4d? | 2026-10-21 A | 2026-10-26 A | 8 | 100% |  |  |  | Site Engineer; Mechanical Fitter | 64h | 64h |
| 10 | 2.3 | Equipment specifications & datasheets | 4d? | 2026-10-21 A | 2026-10-26 A | 9 | 100% |  |  |  | Site Engineer; Mechanical Fitter | 64h | 64h |
| 11 | 2.4 | Electrical load calculation | 3d? | 2026-10-21 A | 2026-10-23 A | 10 | 100% |  |  |  | Electrician | 24h | 24h |
| 12 | 2.5 | Control philosophy design | 5d? | 2026-10-21 A | 2026-10-27 A | 11 | 100% |  |  |  | Automation Engineer | 40h | 40h |
| 13 | 2.6 | Procurement requisitions | 2d? | 2026-10-21 A | 2026-10-22 A | 10, 11 | 100% |  |  |  | Logistics Coordinator | 16h | 16h |
| 14 | 2.7 | Construction schedule baseline | 2d? | 2026-10-21 A | 2026-10-22 A | 8 | 100% |  |  |  | Project Manager | 16h | 16h |
| 15 | 2.8 | Site safety plan | 3d? | 2026-10-21 A | 2026-10-23 A | 14 | 100% |  |  |  | Safety Officer | 24h | 24h |
| 16 | 2.9 | Quality & inspection plan | 3d? | 2026-10-21 A | 2026-10-23 A | 14 | 100% |  |  |  | QA Inspector | 24h | 24h |
| 17 | 2.10 | P&ID review with operations | 6.2d? | 2026-10-21 A | 2026-10-29 | 8, 11 | 29% | 4.4d? | 53.2d |  | Project Manager; QA Inspector | 48h | 28.8h |
| 18 | 3 | **Equipment Procurement** | 12.5d? | 2026-10-21 A | 2026-11-06 |  | 39% | 7.6d? | 1.9d |  |  | 408h | 194.4h |
| 19 | 3.1 | RFQ: extrusion press | 3d? | 2026-10-21 A | 2026-10-23 A | 13 | 100% |  |  |  | Logistics Coordinator | 24h | 24h |
| 20 | 3.2 | Award contract: extrusion press | 2d? | 2026-10-21 A | 2026-10-22 A | 19 | 100% |  |  |  | Logistics Coordinator; Project Manager | 32h | 32h |
| 21 | 3.3 | Vendor build monitoring: press | 10d? | 2026-10-21 A | 2026-11-03 | 20 | 40% | 6d? | 1.4d | 0d | Logistics Coordinator | 80h | 32h |
| 22 | 3.4 | RFQ: conveyor systems | 2d? | 2026-10-21 A | 2026-10-22 A | 13 | 100% |  |  |  | Logistics Coordinator | 16h | 16h |
| 23 | 3.5 | Award contract: conveyors | 2d? | 2026-10-21 A | 2026-10-22 A | 22 | 100% |  |  |  | Logistics Coordinator; Project Manager | 32h | 32h |
| 24 | 3.6 | Conveyor fabrication & shipment | 9.2d? | 2026-10-21 A | 2026-11-03 | 23 | 9% | 8.4d? | 4.2d | 0d | Logistics Coordinator | 64h | 6.4h |
| 25 | 3.7 | RFQ: MCC & switchgear | 2d? | 2026-10-21 A | 2026-10-22 A | 11 | 100% |  |  |  | Electrician | 16h | 16h |
| 26 | 3.8 | Award contract: MCC vendor | 2d? | 2026-10-21 A | 2026-10-22 A | 25 | 100% |  |  |  | Electrician; Project Manager | 32h | 32h |
| 27 | 3.9 | MCC build & shipment | 11.5d? | 2026-10-21 A | 2026-11-05 | 26 | 4% | 11d? | 0.9d | 0d | Electrician | 80h | 4h |
| 28 | 3.10 | Delivery: extrusion press | 1d? | 2026-11-04 | 2026-11-04 | 21 |  |  | 1.4d | 0d | Logistics Coordinator; Mechanical Fitter | 16h |  |
| 29 | 3.11 | Delivery: conveyor systems | 1d? | 2026-11-03 | 2026-11-04 | 24 |  |  | 4.2d | 3.2d | Logistics Coordinator | 8h |  |
| 30 | 3.12 | Delivery: MCC panels | 1d? | 2026-11-05 | 2026-11-06 | 27 |  |  | 0.9d | 0d | Electrician | 8h |  |

Notes:
- 17: Operations sign-off pending; owner confirms it does not close production possibilities.
- 21: Vendor supplier delay flagged; re-plan if factory acceptance slips production start depends on it.
- 28: A late delivery of the press blocks every mechanical installation task downstream and jeopardizes the production start date.

| ID | WBS | Task | Duration | Start | Finish | Predecessors | Complete | Remaining | Total slack | Free slack | Resources | Work | Actual work |
| --- | --- | --- | --- | --- | --- | --- | --- | --- | --- | --- | --- | --- | --- |
| 31 | 4 | **Civil Works & Facility Preparation** | 13.4d? | 2026-10-21 A | 2026-11-09 |  | 44% | 7.51d? | 41d |  |  | 432h | 201.6h |
| 32 | 4.1 | Site clearance & grading | 5d? | 2026-10-21 A | 2026-10-27 A |  | 100% |  |  |  | Civil Contractor | 40h | 40h |
| 33 | 4.2 | Foundations: press base | 4d? | 2026-10-21 A | 2026-10-26 A | 32 | 100% |  |  |  | Civil Contractor | 32h | 32h |
| 34 | 4.3 | Foundations: conveyor supports | 3d? | 2026-10-21 A | 2026-10-23 A | 32 | 100% |  |  |  | Civil Contractor | 24h | 24h |
| 35 | 4.4 | Foundations: MCC room | 2d? | 2026-10-21 A | 2026-10-22 A | 32 | 100% |  |  |  | Civil Contractor | 16h | 16h |
| 36 | 4.5 | Structural steel erection | 6d? | 2026-10-21 A | 2026-10-28 | 33, 34 | 80% | 1.2d? | 0d |  | Civil Contractor; Mechanical Fitter | 96h | 76.8h |
| 37 | 4.6 | Roofing & cladding | 8.4d? | 2026-10-21 A | 2026-11-02 | 36 | 19% | 6.8d? | 0d |  | Civil Contractor | 32h | 12.8h |
| 38 | 4.7 | Floor slabs & resin coating | 4d? | 2026-11-02 | 2026-11-06 | 37 |  |  | 0d |  | Civil Contractor | 32h |  |
| 39 | 4.8 | Drainage & pits | 3d? | 2026-10-27 | 2026-10-29 | 33 |  |  | 47.4d | 0d | Civil Contractor | 24h |  |
| 40 | 4.9 | Compressed-air mains | 3d? | 2026-10-29 | 2026-11-02 | 36 |  |  | 3.4d | 0d | Civil Contractor; Mechanical Fitter | 48h |  |
| 41 | 4.10 | Lighting & small power | 4d? | 2026-11-02 | 2026-11-06 | 37 |  |  | 0d |  | Electrician | 32h |  |
| 42 | 4.11 | Fire protection mains | 3d? | 2026-10-29 | 2026-11-02 | 36 |  |  | 20.4d | 6.4d | Safety Officer; Civil Contractor | 48h |  |
| 43 | 4.12 | Facility readiness check | 1d? | 2026-11-06 | 2026-11-09 | 38, 40, 41 |  |  | 0d |  | Site Engineer | 8h |  |
| 44 | 5 | **Mechanical Installation** | 17.4d? | 2026-10-29 | 2026-11-23 |  |  |  | 6.4d |  |  | 400h |  |
| 45 | 5.1 | Receipt & staging: press | 1d? | 2026-11-05 | 2026-11-05 | 28 |  |  | 1.4d |  | Mechanical Fitter; Logistics Coordinator | 16h |  |
| 46 | 5.2 | Position press on foundations | 3d? | 2026-11-09 | 2026-11-12 | 45, 43 |  |  | 0d |  | Mechanical Fitter | 24h |  |
| 47 | 5.3 | Align & anchor press | 2d? | 2026-11-12 | 2026-11-16 | 46 |  |  | 0d |  | Mechanical Fitter | 16h |  |
| 48 | 5.4 | Hydraulic piping: press | 3d? | 2026-11-16 | 2026-11-19 | 47 |  |  | 36d | 0d | Mechanical Fitter | 24h |  |
| 49 | 5.5 | Cooling-water lines to press | 2d? | 2026-11-19 | 2026-11-23 | 48, 40 |  |  | 36d |  | Mechanical Fitter | 16h |  |
| 50 | 5.6 | Conveyor assembly: line A | 4d? | 2026-11-09 | 2026-11-13 | 29, 43 |  |  | 1d | 0d | Mechanical Fitter | 32h |  |
| 51 | 5.7 | Conveyor assembly: line B | 4d? | 2026-11-09 | 2026-11-13 | 29, 43 |  |  | 10d | 0d | Mechanical Fitter | 32h |  |
| 52 | 5.8 | Install guards: conveyors | 2d? | 2026-11-13 | 2026-11-17 | 50, 51 |  |  | 10d | 0d | Mechanical Fitter | 16h |  |
| 53 | 5.9 | Pneumatic drops to stations | 3d? | 2026-11-03 | 2026-11-05 | 40 |  |  | 44.4d | 6.4d | Mechanical Fitter | 24h |  |
| 54 | 5.10 | Material handling hoists | 2d? | 2026-10-29 | 2026-10-30 | 36 |  |  | 51.4d |  | Mechanical Fitter | 16h |  |
| 55 | 5.11 | Install robotic cells | 5d? | 2026-11-09 | 2026-11-16 | 29, 43 |  |  | 12d | 0d | Mechanical Fitter; Automation Engineer | 80h |  |
| 56 | 5.12 | Robot calibration | 3d? | 2026-11-16 | 2026-11-19 | 55 |  |  | 38d |  | Automation Engineer; Mechanical Fitter | 48h |  |
| 57 | 5.13 | Lubrication & greasing | 1d? | 2026-11-16 | 2026-11-17 | 47, 50 |  |  | 40d |  | Mechanical Fitter | 8h |  |
| 58 | 5.14 | Mechanical completion punch list | 2d? | 2026-11-16 | 2026-11-18 | 47, 50, 53 |  |  | 38d | 0d | Site Engineer; Mechanical Fitter | 32h |  |
| 59 | 5.15 | Mechanical completion sign-off | 1d? | 2026-11-18 | 2026-11-19 | 58 |  |  | 38d |  | QA Inspector; Site Engineer | 16h |  |

Notes:
- 43: Gate before mechanical installation; checklist signed off by site engineering.

| ID | WBS | Task | Duration | Start | Finish | Predecessors | Total slack | Free slack | Resources | Work |
| --- | --- | --- | --- | --- | --- | --- | --- | --- | --- | --- |
| 60 | 6 | **Electrical Installation** | 21d? | 2026-11-02 | 2026-12-01 |  | 5d |  |  | 320h |
| 61 | 6.1 | Stage MCC panels | 1d? | 2026-11-06 | 2026-11-09 | 30 | 0.9d | 0d | Electrician; Logistics Coordinator | 16h |
| 62 | 6.2 | Install MCC & switchgear | 4d? | 2026-11-09 | 2026-11-13 | 61, 41 | 0.9d | 0d | Electrician | 32h |
| 63 | 6.3 | Cable trays & containment | 4d? | 2026-11-02 | 2026-11-06 | 37 | 44d | 0d | Electrician; Civil Contractor | 64h |
| 64 | 6.4 | Feeder cables: MCC → press | 3d? | 2026-11-16 | 2026-11-19 | 62, 47 | 0d |  | Electrician | 24h |
| 65 | 6.5 | Feeder cables: MCC → conveyors | 3d? | 2026-11-13 | 2026-11-18 | 62, 50 | 0.9d |  | Electrician | 24h |
| 66 | 6.6 | Motor connections | 4d? | 2026-11-19 | 2026-11-25 | 64, 65 | 0d |  | Electrician | 32h |
| 67 | 6.7 | Instrument wiring | 3d? | 2026-11-16 | 2026-11-19 | 63, 55 | 38d |  | Electrician; Automation Engineer | 48h |
| 68 | 6.8 | Lighting circuits (final) | 2d? | 2026-11-06 | 2026-11-10 | 63 | 45d |  | Electrician | 16h |
| 69 | 6.9 | Earthing & bonding | 2d? | 2026-11-13 | 2026-11-17 | 62 | 8.9d |  | Electrician | 16h |
| 70 | 6.10 | Cable pulling & terminations | 2d? | 2026-11-25 | 2026-11-27 | 66 | 0d |  | Electrician | 16h |
| 71 | 6.11 | Panel labeling & documentation | 1d? | 2026-11-27 | 2026-11-30 | 70 | 0d |  | Electrician; QA Inspector | 16h |
| 72 | 6.12 | Pre-energization check | 1d? | 2026-11-30 | 2026-12-01 | 66, 69, 71 | 0d |  | Electrician; Safety Officer | 16h |
| 73 | 7 | **Utilities & Supporting Infrastructure** | 10.4d? | 2026-10-30 | 2026-11-13 |  | 19.4d |  |  | 304h |
| 74 | 7.1 | Chiller & HVAC install | 4d? | 2026-11-02 | 2026-11-06 | 37 | 42d | 0d | Civil Contractor; Mechanical Fitter | 64h |
| 75 | 7.2 | Chilled-water piping | 3d? | 2026-11-06 | 2026-11-11 | 74 | 42d | 0d | Mechanical Fitter | 24h |
| 76 | 7.3 | Water-treatment skid | 2d? | 2026-10-30 | 2026-11-02 | 39 | 47.4d | 0d | Mechanical Fitter | 16h |
| 77 | 7.4 | DI-water lines | 2d? | 2026-11-03 | 2026-11-04 | 76 | 47.4d | 4.4d | Mechanical Fitter | 16h |
| 78 | 7.5 | Compressed-air dryer & receivers | 2d? | 2026-11-03 | 2026-11-04 | 40 | 18.4d | 0d | Mechanical Fitter | 16h |
| 79 | 7.6 | Nitrogen supply connection | 2d? | 2026-11-05 | 2026-11-06 | 78 | 45.4d | 2.4d | Mechanical Fitter; Site Engineer | 32h |
| 80 | 7.7 | Natural gas & burners | 3d? | 2026-11-06 | 2026-11-11 | 38 | 14d | 0d | Mechanical Fitter; Safety Officer | 48h |
| 81 | 7.8 | Cooling tower erection | 3d? | 2026-11-02 | 2026-11-05 | 37 | 48d |  | Civil Contractor; Mechanical Fitter | 48h |
| 82 | 7.9 | Utility metering & monitoring | 2d? | 2026-11-11 | 2026-11-13 | 63, 75 | 42d |  | Electrician; Automation Engineer | 32h |
| 83 | 7.10 | Utilities ready for commissioning | 1d? | 2026-11-11 | 2026-11-12 | 75, 77, 79, 80 | 43d |  | Site Engineer | 8h |

Notes:
- 66: Late motor connections stall every downstream integration task; production start slips.

| ID | WBS | Task | Type | Duration | Start | Finish | Predecessors | Complete | Remaining | Total slack | Free slack | Resources | Work | Actual work |
| --- | --- | --- | --- | --- | --- | --- | --- | --- | --- | --- | --- | --- | --- | --- |
| 84 | 8 | **Control System & Automation** |  | 33.4d? | 2026-10-21 A | 2026-12-07 |  | 7% | 31.2d? | 26d |  |  | 448h | 27.2h |
| 85 | 8.1 | Develop PLC logic: line A |  | 9.2d? | 2026-10-21 A | 2026-11-03 | 12 | 20% | 7.4d? | 19.2d | 11.3d | Automation Engineer | 48h | 14.4h |
| 86 | 8.2 | Develop PLC logic: line B |  | 9.8d? | 2026-10-21 A | 2026-11-03 | 12 | 12% | 8.6d? | 18.6d | 10.7d | Automation Engineer | 48h | 9.6h |
| 87 | 8.3 | SCADA screens & historian |  | 8.6d? | 2026-10-21 A | 2026-11-02 | 12 | 5% | 8.2d? | 48.8d | 0d | Automation Engineer | 32h | 3.2h |
| 88 | 8.4 | HMI design review |  | 2d? | 2026-11-02 | 2026-11-04 | 87 |  |  | 48.8d |  | Automation Engineer; Project Manager | 32h |  |
| 89 | 8.5 | Network switches & cabling |  | 3d? | 2026-11-06 | 2026-11-11 | 63 |  |  | 44d |  | Electrician; Automation Engineer | 48h |  |
| 90 | 8.6 | MCC control wiring |  | 3d? | 2026-11-13 | 2026-11-18 | 62 |  |  | 7.9d | 0d | Electrician | 24h |  |
| 91 | 8.7 | Load PLC programs |  | 2d? | 2026-11-18 | 2026-11-20 | 85, 86, 90 |  |  | 7.9d | 2.9d | Automation Engineer | 16h |  |
| 92 | 8.8 | IO checkout: digital signals |  | 3d? | 2026-11-25 | 2026-11-30 | 91, 55, 66 |  |  | 5d | 0d | Automation Engineer; Mechanical Fitter | 48h |  |
| 93 | 8.9 | IO checkout: analog signals |  | 3d? | 2026-11-25 | 2026-11-30 | 91, 66 |  |  | 5d | 0d | Automation Engineer; Electrician | 48h |  |
| 94 | 8.10 | Integrate PLC with SCADA |  | 3d? | 2026-11-30 | 2026-12-03 | 92, 93 |  |  | 5d | 0d | Automation Engineer | 24h |  |
| 95 | 8.11 | Safety PLC & interlocks |  | 3d? | 2026-11-30 | 2026-12-03 | 92 |  |  | 26d | 0d | Safety Officer; Automation Engineer | 48h |  |
| 96 | 8.12 | Control-system dry run |  | 2d? | 2026-12-03 | 2026-12-07 | 94, 95 |  |  | 26d |  | Automation Engineer; Mechanical Fitter | 32h |  |
| 97 | 9 | **Safety Inspections & Compliance** |  | 30.4d? | 2026-10-26 | 2026-12-07 |  |  |  | 0d |  |  | 192h |  |
| 98 | 9.1 | Hazard-analysis update |  | 2d? | 2026-10-26 | 2026-10-27 | 15 |  |  | 22.4d | 0d | Safety Officer | 16h |  |
| 99 | 9.2 | Lockout/tagout procedures |  | 2d? | 2026-10-28 | 2026-10-29 | 98 |  |  | 22.4d | 12.4d | Safety Officer; Site Engineer | 32h |  |
| 100 | 9.3 | Machine-guarding inspection |  | 2d? | 2026-11-17 | 2026-11-19 | 52, 99 |  |  | 10d |  | Safety Officer; Mechanical Fitter | 32h |  |
| 101 | 9.4 | Electrical-safety inspection |  | 2d? | 2026-12-01 | 2026-12-03 | 72, 99 |  |  | 0d |  | Safety Officer; Electrician | 32h |  |
| 102 | 9.5 | Pressure-vessels certification |  | 2d? | 2026-11-05 | 2026-11-06 | 78 |  |  | 18.4d |  | Safety Officer | 16h |  |
| 103 | 9.6 | Fire-protection testing |  | 2d? | 2026-11-11 | 2026-11-13 | 42, 80 |  |  | 14d |  | Safety Officer; Civil Contractor | 32h |  |
| 104 | 9.7 | Integrated safety inspection |  | 2d? | 2026-12-03 | 2026-12-07 | 100, 101, 102, 103 |  |  | 0d |  | Safety Officer; QA Inspector | 32h |  |
| 105 | 9.8 | Safety sign-off (GO / NO-GO) | milestone | 0d? | 2026-12-07 | 2026-12-07 | 104 |  |  | 0d |  |  |  |  |
| 106 | 10 | **Integration & Commissioning** |  | 11d? | 2026-12-07 | 2026-12-22 |  |  |  | 0d |  |  | 280h |  |
| 107 | 10.1 | Energize & initial power-up |  | 1d? | 2026-12-07 | 2026-12-08 | 105 |  |  | 0d |  | Electrician; Site Engineer | 16h |  |
| 108 | 10.2 | Jog tests: individual drives |  | 2d? | 2026-12-08 | 2026-12-10 | 107 |  |  | 0d |  | Electrician; Mechanical Fitter | 32h |  |
| 109 | 10.3 | Sequence tests: line A |  | 3d? | 2026-12-10 | 2026-12-15 | 108, 94 |  |  | 0d |  | Mechanical Fitter; Automation Engineer | 48h |  |
| 110 | 10.4 | Sequence tests: line B |  | 3d? | 2026-12-10 | 2026-12-15 | 108, 94 |  |  | 0d |  | Mechanical Fitter; Automation Engineer | 48h |  |
| 111 | 10.5 | Closed-loop tuning |  | 2d? | 2026-12-15 | 2026-12-17 | 109, 110 |  |  | 0d |  | Automation Engineer | 16h |  |
| 112 | 10.6 | Line interconnect integration |  | 2d? | 2026-12-17 | 2026-12-21 | 111 |  |  | 0d |  | Mechanical Fitter; Automation Engineer | 32h |  |
| 113 | 10.7 | Quality gates setup |  | 2d? | 2026-12-15 | 2026-12-17 | 109 |  |  | 0d |  | QA Inspector; Automation Engineer | 32h |  |
| 114 | 10.8 | Batch tracking validation |  | 2d? | 2026-12-17 | 2026-12-21 | 113 |  |  | 0d |  | QA Inspector; Automation Engineer | 32h |  |
| 115 | 10.9 | Pre-trial readiness review |  | 1d? | 2026-12-21 | 2026-12-22 | 112, 114 |  |  | 0d |  | Site Engineer; QA Inspector; Project Manager | 24h |  |
| 116 | 10.10 | Integration test complete | milestone | 0d? | 2026-12-22 | 2026-12-22 | 115 |  |  | 0d |  |  |  |  |

Notes:
- 94: Delays here stall the integration phase and the production start; commercial impact of late automation is high.
- 104: Missing safety approval blocks the energization and integration phases; regulatory and safety consequences are material.

| ID | WBS | Task | Type | Duration | Start | Finish | Predecessors | Total slack | Free slack | Resources | Work |
| --- | --- | --- | --- | --- | --- | --- | --- | --- | --- | --- | --- |
| 117 | 11 | **Trial Production & Quality Validation** |  | 12d? | 2026-12-22 | 2027-01-07 |  | 0d |  |  | 272h |
| 118 | 11.1 | Trial production run 1 |  | 3d? | 2026-12-22 | 2026-12-25 | 116 | 0d |  | Mechanical Fitter; QA Inspector; Project Manager | 72h |
| 119 | 11.2 | First-article inspection |  | 2d? | 2026-12-25 | 2026-12-29 | 118 | 0d |  | QA Inspector | 16h |
| 120 | 11.3 | Trial-run adjustments |  | 2d? | 2026-12-29 | 2026-12-31 | 119 | 0d |  | Mechanical Fitter; Automation Engineer | 32h |
| 121 | 11.4 | Trial production run 2 |  | 3d? | 2026-12-31 | 2027-01-05 | 120 | 0d |  | Mechanical Fitter; QA Inspector; Project Manager | 72h |
| 122 | 11.5 | OEE / line-rate validation |  | 2d? | 2027-01-05 | 2027-01-07 | 121 | 3d |  | Site Engineer; Project Manager | 32h |
| 123 | 11.6 | Operator training: shift A |  | 2d? | 2026-12-22 | 2026-12-24 | 116 | 12d | 8d | Operator Trainer | 16h |
| 124 | 11.7 | Operator training: shift B |  | 2d? | 2026-12-22 | 2026-12-24 | 116 | 12d | 8d | Operator Trainer | 16h |
| 125 | 11.8 | Handover to operations |  | 1d? | 2027-01-05 | 2027-01-06 | 121, 123, 124 | 4d |  | Project Manager; Site Engineer | 16h |
| 126 | 12 | **Documentation & Handover** |  | 5d? | 2027-01-05 | 2027-01-12 |  | 0d |  |  | 128h |
| 127 | 12.1 | As-built drawings |  | 3d? | 2027-01-05 | 2027-01-08 | 121 | 0d |  | QA Inspector; Site Engineer | 48h |
| 128 | 12.2 | Maintenance manuals |  | 3d? | 2027-01-05 | 2027-01-08 | 121 | 0d |  | Mechanical Fitter; QA Inspector | 48h |
| 129 | 12.3 | Spare-parts list |  | 1d? | 2027-01-05 | 2027-01-06 | 121 | 2d |  | Logistics Coordinator | 8h |
| 130 | 12.4 | Warranty & documentation package |  | 1d? | 2027-01-08 | 2027-01-11 | 127, 128, 129 | 0d |  | Project Manager | 8h |
| 131 | 12.5 | Lessons-learned meeting |  | 1d? | 2027-01-11 | 2027-01-12 | 130 | 0d |  | Project Manager; QA Inspector | 16h |
| 132 | 12.6 | Project closure & handover | milestone | 0d? | 2027-01-12 | 2027-01-12 | 131 | 0d |  |  |  |

Notes:
- 118: A late trial run pushes back the production start; customer commitments assume this window.
- 121: Second trial validates the production ramp; delays here compound customer commitments.
